# restaurent

Schedule from MS Project, 2022-09-30 to 2022-12-06, status date 2022-12-09, costs in $, A marks actual dates.

## Calendars

- Standard: Mon-Fri 08:00-12:00, 13:00-17:00; Sat-Sun off.

## Resources

| Resource | Rate |
| --- | --- |
| A | 15 |
| B | 10 |
| C | 15 |
| D | 10 |
| E | 10 |
| IDE bản quyền 1 | 10 |
| IDE bản quyền 2 | 10 |
| IDE bản quyền 3 | 10 |
| Phần mềm Testing | 10 |
| Phần mềm thiết kế đồ họa | 20 |

## Schedule

| ID | WBS | Task | Duration | Start | Finish | Predecessors | Complete | Baseline start | Baseline finish | Baseline duration | Baseline 1 start | Baseline 1 finish | Constraint | Resources | Work | Actual work | Cost | Baseline cost | Actual cost |
| --- | --- | --- | --- | --- | --- | --- | --- | --- | --- | --- | --- | --- | --- | --- | --- | --- | --- | --- | --- |
| 1 | 1 | **Phát triển phần mềm quản lý nhà hàng** | 47.25d | 2022-09-30 A | 2022-12-06 A |  | 100% | 2022-09-30 | 2022-12-01 | 45d | 2022-09-30 | 2022-11-28 |  |  | 862h | 862h | 10,924.25 | 9,510 | 10,924.25 |
| 2 | 1.1 | **Khảo sát** | 8.38d | 2022-09-30 A | 2022-10-12 A |  | 100% | 2022-09-30 | 2022-10-11 | 7.62d | 2022-09-30 | 2022-10-11 |  |  | 174h | 174h | 2,330 | 2,210 | 2,330 |
| 3 | 1.1.1 | Phân tích một số hệ thống hiện hành | 1d | 2022-09-30 A | 2022-09-30 A |  | 100% | 2022-09-30 | 2022-09-30 | 1d | 2022-09-30 | 2022-09-30 |  | A | 8h | 8h | 120 | 120 | 120 |
| 4 | 1.1.2 | **Phân tích yêu cầu** | 5d | 2022-09-30 A | 2022-10-06 A |  | 100% | 2022-09-30 | 2022-10-06 | 5d | 2022-09-30 | 2022-10-06 |  |  | 107h | 107h | 1,405 | 1,405 | 1,405 |
| 5 | 1.1.2.1 | Phân tích yêu cầu chủ sở hữu | 1d | 2022-10-03 A | 2022-10-03 A |  | 100% | 2022-10-03 | 2022-10-03 | 1d | 2022-10-03 | 2022-10-03 | start no earlier than 2022-10-03 | B; A | 8h | 8h | 80 | 80 | 80 |
| 6 | 1.1.2.2 | Phân tích yêu cầu của quản lý | 1d | 2022-09-30 A | 2022-09-30 A |  | 100% | 2022-09-30 | 2022-09-30 | 1d | 2022-09-30 | 2022-09-30 | start no earlier than 2022-09-30 | C | 8h | 8h | 120 | 120 | 120 |
| 7 | 1.1.2.3 | Phân tích yêu cầu của nhân viên | 1d | 2022-09-30 A | 2022-09-30 A |  | 100% | 2022-09-30 | 2022-09-30 | 1d | 2022-09-30 | 2022-09-30 |  | B | 8h | 8h | 80 | 80 | 80 |
| 8 | 1.1.2.4 | Phân tích yêu cầu của khách hàng | 2d | 2022-10-03 A | 2022-10-04 A |  | 100% | 2022-10-03 | 2022-10-04 | 2d | 2022-10-03 | 2022-10-04 | start no earlier than 2022-10-03 | A; C | 27h | 27h | 405 | 405 | 405 |
| 9 | 1.1.2.5 | Phân tích yêu cầu về giao diện hệ thống | 2d | 2022-10-05 A | 2022-10-06 A | 5, 6, 7, 8 | 100% | 2022-10-05 | 2022-10-06 | 2d | 2022-10-05 | 2022-10-06 |  | A; D | 32h | 32h | 400 | 400 | 400 |
| 10 | 1.1.2.6 | Phân tích yêu cầu về hệ thống | 2d | 2022-10-05 A | 2022-10-06 A | 5, 6, 7, 8 | 100% | 2022-10-05 | 2022-10-06 | 2d | 2022-10-05 | 2022-10-06 |  | B; C | 24h | 24h | 320 | 320 | 320 |
| 11 | 1.1.3 | Phân tích chức năng hệ thống | 1d | 2022-10-07 A | 2022-10-07 A | 9, 10 | 100% | 2022-10-07 | 2022-10-07 | 1d | 2022-10-07 | 2022-10-07 |  | A; B; C | 24h | 24h | 320 | 320 | 320 |
| 12 | 1.1.4 | Lên kế hoạch | 2d | 2022-10-08 A | 2022-10-12 A | 11 | 100% | 2022-10-08 | 2022-10-11 | 1.25d | 2022-10-08 | 2022-10-11 |  | A; B; C | 27h | 27h | 365 | 245 | 365 |
| 13 | 1.1.5 | Xác định nhóm phát triển phần mềm, phân chia công việc | 1d | 2022-10-10 A | 2022-10-10 A | 11 | 100% | 2022-10-10 | 2022-10-10 | 1d | 2022-10-10 | 2022-10-10 | start no earlier than 2022-10-10 | A | 8h | 8h | 120 | 120 | 120 |
| 14 | 1.2 | **Thiết kế hệ thống** | 11d | 2022-10-12 A | 2022-10-27 A |  | 100% | 2022-10-11 | 2022-10-21 | 8.38d | 2022-10-11 | 2022-10-21 |  |  | 160h | 160h | 1,820 | 1,260 | 1,820 |
| 15 | 1.2.1 | Thiết kế kiến trúc hệ thống | 5d | 2022-10-13 A | 2022-10-27 A | 12, 13 | 100% | 2022-10-11 | 2022-10-21 | 3d | 2022-10-11 | 2022-10-21 | start no earlier than 2022-10-11 | B | 40h | 40h | 400 | 240 | 400 |
| 16 | 1.2.2 | Thiết kế các module chức năng của hệ thống | 5d | 2022-10-17 A | 2022-10-24 A | 12, 13 | 100% | 2022-10-17 | 2022-10-20 | 3d | 2022-10-17 | 2022-10-20 | start no earlier than 2022-10-17 | B | 40h | 40h | 400 | 240 | 400 |
| 17 | 1.2.3 | Thiết kế giao diện | 5d | 2022-10-12 A | 2022-10-20 A | 12, 13 | 100% | 2022-10-11 | 2022-10-19 | 1w | 2022-10-11 | 2022-10-14 |  | D; Phần mềm thiết kế đồ họa | 40h | 40h | 420 | 420 | 420 |
| 18 | 1.2.4 | Thiết kế server | 5d | 2022-10-12 A | 2022-10-19 A | 12, 13 | 100% | 2022-10-11 | 2022-10-14 | 3d | 2022-10-11 | 2022-10-14 |  | C | 40h | 40h | 600 | 360 | 600 |
| 19 | 1.3 | **Phát triển hệ thống** | 19.88d | 2022-10-19 A | 2022-11-16 A |  | 100% | 2022-10-14 | 2022-11-08 | 17.38d | 2022-10-14 | 2022-11-04 |  |  | 392h | 392h | 5,084.25 | 4,030 | 5,084.25 |
| 20 | 1.3.1 | Phát triển các chức năng của hệ thống | 1.8w | 2022-10-25 A | 2022-11-04 A | 16 | 100% | 2022-10-24 | 2022-10-31 | 1.2w | 2022-10-24 | 2022-10-28 | start no earlier than 2022-10-23 | A; B; IDE bản quyền 1 [96.2%]; IDE bản quyền 2 [96.2%] | 123h | 123h | 1,609.25 | 1,020 | 1,609.25 |
| 21 | 1.3.2 | Phát triển giao diện | 1w | 2022-10-20 A | 2022-10-28 A | 17 | 100% | 2022-10-19 | 2022-10-27 | 1w | 2022-10-14 | 2022-10-25 |  | D | 40h | 40h | 400 | 400 | 400 |
| 22 | 1.3.3 | Phát triển server | 1w | 2022-10-19 A | 2022-10-26 A | 18 | 100% | 2022-10-14 | 2022-10-21 | 1w | 2022-10-14 | 2022-10-21 |  | C; IDE bản quyền 3 | 40h | 40h | 610 | 610 | 610 |
| 23 | 1.3.4 | Tích hợp | 1.82w | 2022-11-04 A | 2022-11-16 A | 20, 21, 22 | 100% | 2022-11-01 | 2022-11-08 | 1.32w | 2022-10-29 | 2022-11-04 |  | A; B; C; D | 189h | 189h | 2,465 | 2,000 | 2,465 |
| 24 | 1.4 | **Kiểm thử** | 8.38d | 2022-11-16 A | 2022-11-29 A |  | 100% | 2022-11-09 | 2022-11-23 | 10.38d | 2022-11-07 | 2022-11-21 |  |  | 64h | 64h | 770 | 1,010 | 770 |
| 25 | 1.4.1 | Kiểm thử hệ thống | 5d | 2022-11-16 A | 2022-11-24 A | 23 | 100% | 2022-11-09 | 2022-11-16 | 1w | 2022-11-07 | 2022-11-14 |  | E; Phần mềm Testing | 40h | 40h | 410 | 410 | 410 |
| 26 | 1.4.2 | Kiểm thử chấp nhận người dùng | 3d | 2022-11-24 A | 2022-11-29 A | 25 | 100% | 2022-11-17 | 2022-11-23 | 1w | 2022-11-15 | 2022-11-21 |  | A | 24h | 24h | 360 | 600 | 360 |
| 27 | 1.5 | Bảo trì | 1w | 2022-11-29 A | 2022-12-06 A | 26 | 100% | 2022-11-23 | 2022-12-01 | 1.2w | 2022-11-21 | 2022-11-28 |  | B; C | 72h | 72h | 920 | 1,000 | 920 |
